# PP2

Schedule from MS Project, 2010-09-29 to 2011-07-11.
Techlogix Pakistan (Pvt) Ltd.

## Calendars

- Standard: Mon-Fri 08:00-12:00, 13:00-17:00; Sat-Sun off.

## Resources

| Resource |
| --- |
| Tahir |
| Qasim |
| Zubair |
| Amber |

## Schedule

| ID | WBS | Task | Duration | Start | Finish | Predecessors | Total slack | Free slack | Resources | Work |
| --- | --- | --- | --- | --- | --- | --- | --- | --- | --- | --- |
| 1 | 1 | **Farmer Plus** | 204d? | 2010-09-29 | 2011-07-11 |  | 0d |  |  | 3028.67h |
| 2 | 1.1 | **Requirements Engineering** | 49d? | 2010-09-29 | 2010-12-06 |  | 0d |  |  | 882.67h |
| 3 | 1.1.1 | Requirements Elicitation | 10d | 2010-09-29 | 2010-10-12 |  | 0d |  | Tahir [50%]; Qasim [50%]; Zubair [50%]; Amber [50%] | 160h |
| 4 | 1.1.2 | Requirements Review | 2d | 2010-10-13 | 2010-10-14 | 3 | 0d |  | Tahir [50%]; Qasim [50%]; Zubair [50%]; Amber [50%] | 32h |
| 5 | 1.1.3 | **Requirements Analysis** | 20d | 2010-10-15 | 2010-11-11 |  | 0d |  |  | 418.67h |
| 6 | 1.1.3.1 | Use Case document: | 10d | 2010-10-15 | 2010-10-28 | 4 | 10d |  | Qasim [50%]; Amber [50%] | 66.67h |
| 7 | 1.1.3.2 | Interface prototypes | 10d | 2010-10-15 | 2010-10-28 | 4 | 10d |  | Zubair [50%]; Amber [50%] | 80h |
| 8 | 1.1.3.3 | Architecture Diagram | 4d | 2010-10-15 | 2010-10-20 | 4 | 16d |  | Tahir [50%]; Qasim [50%] | 32h |
| 9 | 1.1.3.4 | Database Diagram | 10d | 2010-10-15 | 2010-10-28 | 4 | 0d |  | Tahir [50%]; Zubair [50%] | 80h |
| 10 | 1.1.3.5 | Requirements Analysis Documentation | 5d | 2010-10-29 | 2010-11-04 | 9 | 0d |  | Tahir [50%]; Qasim [50%]; Zubair [50%]; Amber [50%] | 80h |
| 11 | 1.1.3.6 | Requirements Prioritization and Negotiation | 5d | 2010-11-05 | 2010-11-11 | 10 | 0d |  | Tahir [50%]; Qasim [50%]; Zubair [50%]; Amber [50%] | 80h |
| 12 | 1.1.4 | Requirements Validation | 5d | 2010-11-12 | 2010-11-18 | 5 | 0d |  | Tahir [50%]; Qasim [50%]; Zubair [50%]; Amber [50%] | 80h |
| 13 | 1.1.5 | Requirements Specification | 8d | 2010-11-19 | 2010-11-30 | 12 | 0d |  | Tahir [50%]; Qasim [50%]; Zubair [50%]; Amber [50%] | 128h |
| 14 | 1.1.6 | RS Review | 2d | 2010-12-01 | 2010-12-02 | 13 | 155d | 0d | Tahir [50%]; Qasim [50%]; Zubair [50%]; Amber [50%] | 32h |
| 15 | 1.1.7 | SRS Quality Report | 1d? | 2010-12-03 | 2010-12-03 | 14 | 155d | 0d | Tahir [50%]; Qasim [50%]; Zubair [50%]; Amber [50%] | 16h |
| 16 | 1.1.8 | Project Control and Monitoring | 1d? | 2010-12-06 | 2010-12-06 | 15 | 155d |  | Tahir [50%]; Qasim [50%]; Zubair [50%]; Amber [50%] | 16h |
| 17 | 1.2 | **Usability Engineering** | 32d? | 2010-09-29 | 2010-11-11 |  | 172d |  |  | 128h |
| 18 | 1.2.1 | User Profiles | 10d | 2010-09-29 | 2010-10-12 |  | 172d | 0d | Qasim [50%] | 40h |
| 19 | 1.2.2 | Task Analysis | 5d | 2010-10-13 | 2010-10-19 | 18 | 172d | 0d | Qasim [50%] | 20h |
| 20 | 1.2.3 | Platform Capability | 3d | 2010-10-20 | 2010-10-22 | 19 | 172d | 0d | Qasim [50%] | 12h |
| 21 | 1.2.4 | Design Principles | 3d | 2010-10-25 | 2010-10-27 | 20 | 172d | 0d | Qasim [50%] | 12h |
| 22 | 1.2.5 | Style Guide | 10d | 2010-10-28 | 2010-11-10 | 21 | 172d | 0d | Qasim [50%] | 40h |
| 23 | 1.2.6 | Project Control and Monitoring | 1d? | 2010-11-11 | 2010-11-11 | 22 | 172d |  | Qasim [50%] | 4h |
| 24 | 1.3 | **Test Planning** | 59d? | 2010-09-29 | 2010-12-20 |  | 145d |  |  | 80h |
| 25 | 1.3.1 | Test Strategy | 6d | 2010-09-29 | 2010-10-06 |  | 184d | 39d | Amber [50%] | 24h |
| 26 | 1.3.2 | Test Case Preperation | 12d | 2010-12-01 | 2010-12-16 | 25, 13 | 145d | 0d | Amber [50%] | 48h |
| 27 | 1.3.3 | Test Case Quality Report | 1d? | 2010-12-17 | 2010-12-17 | 26 | 145d | 0d | Amber [50%] | 4h |
| 28 | 1.3.4 | Project Control and Monitoring | 1d? | 2010-12-20 | 2010-12-20 | 27 | 145d |  | Amber [50%] | 4h |

| ID | WBS | Task | Duration | Start | Finish | Predecessors | Total slack | Free slack | Resources | Work |
| --- | --- | --- | --- | --- | --- | --- | --- | --- | --- | --- |
| 29 | 1.4 | **Environment Setup** | 20d | 2010-09-29 | 2010-10-26 |  | 170d | 0d |  | 128h |
| 30 | 1.4.1 | Prepare Linux Server | 4d | 2010-09-29 | 2010-10-04 |  | 170d | 0d | Tahir [50%] | 16h |
| 31 | 1.4.2 | Prepare Windows Server | 2d | 2010-09-29 | 2010-09-30 |  | 184d | 0d | Zubair [50%] | 8h |
| 32 | 1.4.3 | Configure Databases | 2d | 2010-10-01 | 2010-10-04 | 31 | 186d |  | Tahir [50%] | 8h |
| 33 | 1.4.4 | Configure Asterisk | 8d | 2010-10-05 | 2010-10-14 | 30 | 170d | 0d | Tahir [50%] | 32h |
| 34 | 1.4.5 | Configure TrixBox | 8d | 2010-10-15 | 2010-10-26 | 33 | 170d |  | Tahir [50%] | 32h |
| 35 | 1.4.6 | Configure SMS Lib | 4d | 2010-10-01 | 2010-10-06 | 31 | 184d |  | Tahir [50%] | 16h |
| 36 | 1.4.7 | Configure .NET | 4d | 2010-10-01 | 2010-10-06 | 31 | 184d |  | Tahir [50%] | 16h |
| 37 | 1.5 | Pilot Application Development | 12d | 2010-10-27 | 2010-11-11 | 29 | 170d | 0d | Tahir [50%]; Qasim [50%]; Zubair [50%] | 144h |
| 38 | 1.6 | Project Control and Monitoring | 2d? | 2010-11-12 | 2010-11-15 | 37 | 170d |  | Amber [50%]; Qasim [50%] | 16h |
| 39 | 1.7 | **Design and Architecture** | 37d? | 2010-12-01 | 2011-01-20 |  | 0d |  |  | 432h |
| 40 | 1.7.1 | Class Diagram | 5d | 2010-12-01 | 2010-12-07 | 13 | 0d |  | Tahir [50%]; Qasim [50%]; Zubair [50%]; Amber [50%] | 80h |
| 41 | 1.7.2 | Interaction Diagram | 4d | 2010-12-08 | 2010-12-13 | 40 | 0d |  | Tahir [50%]; Qasim [50%]; Zubair [50%]; Amber [50%] | 64h |
| 42 | 1.7.3 | State Diagram | 4d | 2010-12-14 | 2010-12-17 | 41 | 0d |  | Tahir [50%]; Qasim [50%]; Zubair [50%]; Amber [50%] | 64h |
| 43 | 1.7.4 | Deployment Diagram | 2d | 2010-12-20 | 2010-12-21 | 42 | 0d |  | Tahir [50%]; Qasim [50%]; Zubair [50%]; Amber [50%] | 32h |
| 44 | 1.7.5 | **Database Design** | 18d | 2010-12-22 | 2011-01-14 |  | 0d |  |  | 144h |
| 45 | 1.7.5.1 | Data Entry Applciation DB Design | 5d | 2010-12-22 | 2010-12-28 | 43 | 0d |  | Tahir [50%]; Zubair [50%] | 40h |
| 46 | 1.7.5.2 | SMS and IVR Database Design | 8d | 2010-12-29 | 2011-01-07 | 45 | 0d |  | Tahir [50%]; Zubair [50%] | 64h |
| 47 | 1.7.5.3 | Alerts and Registeration Database design | 5d | 2011-01-10 | 2011-01-14 | 46 | 0d |  | Tahir [50%]; Zubair [50%] | 40h |
| 48 | 1.7.6 | Design Review | 2d | 2011-01-17 | 2011-01-18 | 47 | 0d |  | Tahir [50%]; Qasim [50%]; Zubair [50%]; Amber [50%] | 32h |
| 49 | 1.7.7 | Design Quality Report | 1d? | 2011-01-19 | 2011-01-19 | 48 | 122d | 0d | Amber [50%]; Qasim [50%] | 8h |
| 50 | 1.7.8 | Project Control and Monitoring | 1d? | 2011-01-20 | 2011-01-20 | 49 | 122d |  | Amber [50%]; Qasim [50%] | 8h |
| 51 | 1.8 | **Development** | 71d? | 2011-01-19 | 2011-04-27 |  | 0d |  |  | 850h |
| 52 | 1.8.1 | **Data Entry Application** | 27d | 2011-01-19 | 2011-02-24 |  | 44d |  |  | 272h |
| 53 | 1.8.1.1 | Use Case Development | 20d | 2011-01-19 | 2011-02-15 | 48 | 44d | 0d | Qasim [50%]; Zubair [50%]; Tahir [25%] | 200h |
| 54 | 1.8.1.2 | Unit Testing | 5d | 2011-02-16 | 2011-02-22 | 53 | 44d | 0d | Qasim [50%]; Zubair [50%] | 40h |
| 55 | 1.8.1.3 | Code Review | 2d | 2011-02-23 | 2011-02-24 | 54 | 44d |  | Qasim [50%]; Zubair [50%]; Tahir [50%]; Amber [50%] | 32h |

Notes:
- 29: Will be done with 'Proof of Concepts (POC)' for every thing. Any delay in Environment Preperation will delay the project

| ID | WBS | Task | Duration | Start | Finish | Predecessors | Total slack | Free slack | Resources | Work |
| --- | --- | --- | --- | --- | --- | --- | --- | --- | --- | --- |
| 56 | 1.8.2 | **Data Feed Utility Development** | 24d | 2011-01-19 | 2011-02-21 |  | 47d |  |  | 250h |
| 57 | 1.8.2.1 | Utility development - coding | 15d | 2011-01-19 | 2011-02-08 | 48 | 47d | 0d | Amber [50%]; Tahir [25%]; Zubair | 150h |
| 58 | 1.8.2.2 | Scheduling of utility | 3d | 2011-02-09 | 2011-02-11 | 57 | 47d | 0d | Amber [50%]; Tahir [25%]; Zubair | 36h |
| 59 | 1.8.2.3 | Unit Testing | 4d | 2011-02-14 | 2011-02-17 | 58 | 47d | 0d | Amber [50%]; Tahir [25%]; Zubair | 32h |
| 60 | 1.8.2.4 | Code Review | 2d | 2011-02-18 | 2011-02-21 | 59 | 47d |  | Tahir [50%]; Qasim [50%]; Zubair [50%]; Amber [50%] | 32h |
| 61 | 1.8.3 | **SMS Processing Module Development** | 33d | 2011-01-19 | 2011-03-04 |  | 0d |  |  | 156h |
| 62 | 1.8.3.1 | Configuration and Scenario Implementations | 20d | 2011-01-19 | 2011-02-15 | 48 | 0d |  | Tahir [50%] | 80h |
| 63 | 1.8.3.2 | SMS Alert configuration | 8d | 2011-02-16 | 2011-02-25 | 62 | 0d |  | Tahir [50%] | 32h |
| 64 | 1.8.3.3 | Unit Testing | 3d | 2011-02-28 | 2011-03-02 | 63 | 0d |  | Tahir [50%] | 12h |
| 65 | 1.8.3.4 | Code Review | 2d | 2011-03-03 | 2011-03-04 | 64 | 0d |  | Tahir [50%]; Qasim [50%]; Zubair [50%]; Amber [50%] | 32h |
| 66 | 1.8.4 | **IVR Processing Module Development** | 38d? | 2011-03-07 | 2011-04-27 |  | 0d |  |  | 172h |
| 67 | 1.8.4.1 | Configuration and Scenario Implementations | 25d | 2011-03-07 | 2011-04-08 | 65 | 0d |  | Tahir [50%] | 100h |
| 68 | 1.8.4.2 | Unit Testing | 8d | 2011-04-11 | 2011-04-20 | 67 | 0d |  | Tahir [50%] | 32h |
| 69 | 1.8.4.3 | Review | 4d | 2011-04-21 | 2011-04-26 | 68 | 0d |  | Amber [50%]; Qasim [50%] | 32h |
| 70 | 1.8.4.4 | Project Control and Monitoring | 1d? | 2011-04-27 | 2011-04-27 | 69 | 0d |  | Amber [50%]; Qasim [50%] | 8h |
| 71 | 1.9 | **Testing Cycle 1** | 27d? | 2011-04-28 | 2011-06-03 |  | 0d |  |  | 76h |
| 72 | 1.9.1 | Test Case Execution | 10d | 2011-04-28 | 2011-05-11 | 51 | 0d |  |  |  |
| 73 | 1.9.2 | Integeration Testing | 10d | 2011-05-12 | 2011-05-25 | 72 | 0d |  | Amber [50%] | 40h |
| 74 | 1.9.3 | System Testing | 5d | 2011-05-26 | 2011-06-01 | 73 | 0d |  | Amber [50%] | 20h |
| 75 | 1.9.4 | Defect Reports | 1d? | 2011-06-02 | 2011-06-02 | 74 | 0d |  | Amber [50%]; Qasim [50%] | 8h |
| 76 | 1.9.5 | Project Control and Monitoring | 1d? | 2011-06-03 | 2011-06-03 | 75 | 0d |  | Amber [50%]; Qasim [50%] | 8h |
| 77 | 1.10 | Bug Fixing | 15d | 2011-06-06 | 2011-06-24 | 76 | 0d |  | Tahir [50%]; Qasim [50%]; Zubair [50%]; Amber [50%] | 240h |
| 78 | 1.11 | **Testing Cycle 2** | 11d? | 2011-06-27 | 2011-07-11 | 71 | 0d |  |  | 52h |
| 79 | 1.11.1 | Test Case Execution | 5d | 2011-06-27 | 2011-07-01 | 77 | 0d |  | Amber [50%] | 20h |
| 80 | 1.11.2 | Integeration Testing | 2d | 2011-07-04 | 2011-07-05 | 79 | 0d |  | Amber [50%] | 8h |
| 81 | 1.11.3 | System Testing | 2d | 2011-07-06 | 2011-07-07 | 80 | 0d |  | Amber [50%] | 8h |
| 82 | 1.11.4 | Defect Reports | 1d? | 2011-07-08 | 2011-07-08 | 81 | 0d |  | Amber [50%]; Qasim [50%] | 8h |
| 83 | 1.11.5 | Project Control and Monitoring | 1d? | 2011-07-11 | 2011-07-11 | 82 | 0d |  | Amber [50%]; Qasim [50%] | 8h |
